# CRONOGRAMA

Schedule from MS Project XML, 2025-09-17 to 2025-10-24.

## Calendars

- Estándar: Mon-Fri 09:00-13:00, 15:00-19:00; Sat 08:00-12:00; Sun off.

## Schedule

| ID | WBS | Task | Duration | Start | Finish | Predecessors | Total slack | Free slack |
| --- | --- | --- | --- | --- | --- | --- | --- | --- |
| 1 | 1 | **PROYECTO DEPORTES** | 30d | 2025-09-17 | 2025-10-24 |  | 0d |  |
| 2 | 1.1 | **PRELIMINARES** | 16d | 2025-09-17 | 2025-10-07 |  | 0d |  |
| 3 | 1.1.1 | SOCIALIZACIÓN DE LA OBRA | 1d | 2025-09-17 | 2025-09-17 |  | 0d |  |
| 4 | 1.1.2 | SOCIALIZACIÓN DE LA OBRA JAL | 1d | 2025-09-18 | 2025-09-18 | 3 | 0d |  |
| 5 | 1.1.3 | CERRAMIENTO POLISOMBRA TUPIDA H=2.00 | 2d | 2025-09-23 | 2025-09-25 | 4FS+3d | 0d |  |
| 6 | 1.1.4 | RETIRO TIERRA Y ESCOMBROS, DISPOSICIÓN EN SITIO AUTORIZADO CERTIFICADO (INCL. FACTOR DE EXPANSIÓN)-KM | 1d | 2025-10-06 | 2025-10-07 | 7 | 14d |  |
| 7 | 1.1.5 | CARGUE DE SALDO EN SITIO (MANUAL) | 1d | 2025-10-04 | 2025-10-06 | 10, 14 | 14d | 0d |
| 8 | 1.2 | **ADECUACIÓN PISTA DE TROTE A ZONA VERDE** | 11d | 2025-09-25 | 2025-10-09 |  | 9d |  |
| 9 | 1.2.1 | DEMOLICION PAVIMENTO FLEXIBLE (INCLUYE CARGUE) | 5d | 2025-09-25 | 2025-10-01 | 5 | 9d | 0d |
| 10 | 1.2.2 | DEMOLICION SARDINEL CONCRETO 15 X 15 CM. | 2d | 2025-10-02 | 2025-10-03 | 9 | 9d | 0d |
| 11 | 1.2.3 | RELLENO CON TIERRA NEGRA Y ARENA, PROPORCION 70/30 (30% TIERRA) | 1d | 2025-10-04 | 2025-10-06 | 10 | 9d | 0d |
| 12 | 1.2.4 | PRADO TRENZA | 3d | 2025-10-06 | 2025-10-09 | 11 | 9d | 0d |
| 13 | 1.3 | **ADECUACIÓN PISTA DE ASFALTO** | 21d | 2025-09-25 | 2025-10-22 |  | 0d |  |
| 14 | 1.3.1 | EXCAVACION TIERRA A MANO. | 5d | 2025-09-25 | 2025-10-01 | 5 | 0d |  |
| 15 | 1.3.2 | CONFORM.COMPACT.SUBRASANTE CBR=95 | 3d | 2025-10-02 | 2025-10-06 | 14 | 0d |  |
| 16 | 1.3.3 | CORDON CONCRETO 3000 PSI (15 x 35 CM) | 3d | 2025-10-02 | 2025-10-06 | 14 | 15d |  |
| 17 | 1.3.4 | GEOTEXTIL TEJIDO 2100 | 2d | 2025-10-06 | 2025-10-08 | 15 | 0d |  |
| 18 | 1.3.5 | SUB-BASE COMP.MAT. TIPO INVIAS (CLASE A) CON TRANSPORTE | 3d | 2025-10-08 | 2025-10-11 | 17 | 0d |  |
| 19 | 1.3.6 | MEDIO FILTRANTE GRAVA <=1" CU=0.95-1" | 2d | 2025-10-13 | 2025-10-14 | 18 | 0d |  |
| 20 | 1.3.7 | BASE COMP.MAT. TIPO INVIAS (CLASE A) CON TRANSPORTE | 2d | 2025-10-15 | 2025-10-16 | 19 | 0d |  |
| 21 | 1.3.8 | CARBONILLA | 3d | 2025-10-17 | 2025-10-21 | 20 | 0d |  |
| 22 | 1.3.9 | CILINDRO COMPACTADOR DE 3 TONELADAS (ALQUILER) | 3d | 2025-10-18 | 2025-10-22 | 21SS+1d | 0d |  |
| 23 | 1.4 | **ADECUACIÓN DE AREAS EN GRAMA** | 3d | 2025-10-09 | 2025-10-13 |  | 9d |  |
| 24 | 1.4.1 | LIMPIEZA LAVADO SUPERFICIE- EQ.PRESION | 1d | 2025-10-09 | 2025-10-10 | 12 | 9d | 0d |
| 25 | 1.4.2 | SUMINISTRO, TRANSPORTE E INSTALACIÓN DE PISO EN GRAMA SINTÉTICA MONOFILAMENTO DE POLIETILENO, (SEGÚN ESPECIFICACION) | 2d | 2025-10-10 | 2025-10-13 | 24 | 9d |  |

| ID | WBS | Task | Type | Duration | Start | Finish | Predecessors | Total slack |
| --- | --- | --- | --- | --- | --- | --- | --- | --- |
| 26 | 1.5 | **GESTION DE OBRA** |  | 29d | 2025-09-18 | 2025-10-24 |  | 0d |
| 27 | 1.5.1 | Gestion Ambiental |  | 1d | 2025-10-22 | 2025-10-23 | 22 | 0d |
| 28 | 1.5.2 | Gestión Social |  | 1d | 2025-10-23 | 2025-10-24 | 27 | 0d |
| 29 | 1.5.3 | Gestión e implementación PMT |  | 1d | 2025-10-23 | 2025-10-24 | 27 | 0d |
| 30 | 1.5.4 | Porovisionales (VALLA ESP 0,50X0,70; según decreto 1140 de 1998) |  | 1d | 2025-09-18 | 2025-09-18 | 3 | 28d |
| 31 | 2 | FIN | milestone | 0d | 2025-10-24 | 2025-10-24 | 29 | 0d |
